# Cronograma SISPPAFUT

Schedule from MS Project, 2012-03-19 to 2012-12-06, A marks actual dates.

## Calendars

- Calendario SISPPAFUT: Mon-Fri 09:00-13:00, 15:00-19:00; Sat-Sun off. Exceptions (off unless hours are given): 2012-03-21 to 2012-12-07 (recurring), 2012-05-07 to 2012-05-11, 2012-07-02 to 2012-07-08, 2012-07-09 09:00-13:00, 15:00-19:00, 2012-07-10 to 2012-08-12, 2012-08-13 to 2012-08-14 09:00-13:00, 15:00-19:00, 2012-08-15 to 2012-08-17, 2012-10-08 to 2012-10-12.

## Resources

| Resource |
| --- |
| Michael Martínez |
| Rodolfo Cordero |
| Analista QA |
| Renzo Martínez |
| Milagros Cruz |
| No asignado |
| David Mauricio |
| Gerente de Software Factory |

## Schedule

| ID | WBS | Task | Type | Duration | Start | Finish | Predecessors | Complete | Remaining | Total slack | Constraint | Resources | Work | Actual work |
| --- | --- | --- | --- | --- | --- | --- | --- | --- | --- | --- | --- | --- | --- | --- |
| 1 | 1 | **Sistema Inteligente para Pronósticos de Partidos de Fútbol** |  | 90d | 2012-03-19 A | 2012-12-06 |  | 70% | 26.68d | 0d |  |  | 924h | 683.76h |
| 2 | 1.1 | **Planificación** |  | 1d | 2012-03-19 A | 2012-03-19 A |  | 100% |  |  |  |  | 8h | 8h |
| 3 | 1.1.1 | Elaboraración del Glosario |  | 1d | 2012-03-19 A | 2012-03-19 A |  | 100% |  |  |  | Michael Martínez | 8h | 8h |
| 4 | 1.2 | **Reunión de Asesoria/Cliente** |  | 1d | 2012-03-20 A | 2012-03-20 A |  | 100% |  |  |  |  | 8h | 8h |
| 5 | 1.2.1 | Revisión de avances |  | 0.5d | 2012-03-20 A | 2012-03-20 A | 3 | 100% |  |  |  | Michael Martínez | 4h | 4h |
| 6 | 1.2.2 | Asignación de nuevas actividades |  | 0.5d | 2012-03-20 A | 2012-03-20 A | 5 | 100% |  |  |  | David Mauricio | 4h | 4h |
| 7 | 1.2.3 | Elaboración de Acta de Reunión | milestone | 0d | 2012-03-20 A | 2012-03-20 A | 6 | 100% |  |  |  | Michael Martínez |  |  |
| 8 | 1.2.4 | Firma de acuerdo del acta de reunión | milestone | 0d | 2012-03-20 A | 2012-03-20 A | 7 | 100% |  |  |  | David Mauricio |  |  |
| 9 | 1.3 | **Product Backlog** |  | 0.6d | 2012-03-20 A | 2012-03-20 A |  | 100% |  |  |  |  | 4.8h | 4.8h |
| 10 | 1.3.1 | Creación de User Stories |  | 0.5d | 2012-03-20 A | 2012-03-20 A | 8 | 100% |  |  | start no earlier than 2012-03-20 | Michael Martínez | 4h | 4h |
| 11 | 1.3.2 | Priorización de User Stories |  | 0.1d | 2012-03-20 A | 2012-03-20 A | 10 | 100% |  |  | start no earlier than 2012-03-20 | Michael Martínez | 0.8h | 0.8h |
| 12 | 1.4 | **Planificación de los Sprints** |  | 0.4d | 2012-03-20 A | 2012-03-20 A |  | 100% |  |  |  |  | 3.2h | 3.2h |
| 13 | 1.4.1 | Determinar Sprints |  | 0.1d | 2012-03-20 A | 2012-03-20 A | 11 | 100% |  |  |  | Michael Martínez | 0.8h | 0.8h |
| 14 | 1.4.2 | Determinar los Sprints Backlog |  | 0.1d | 2012-03-20 A | 2012-03-20 A | 13 | 100% |  |  | start no earlier than 2012-03-20 | Michael Martínez | 0.8h | 0.8h |
| 15 | 1.4.3 | Determinar duración de cada Sprint |  | 0.1d | 2012-03-20 A | 2012-03-20 A | 14 | 100% |  |  |  | Michael Martínez | 0.8h | 0.8h |
| 16 | 1.4.4 | Determinar Releases |  | 0.1d | 2012-03-20 A | 2012-03-20 A | 15 | 100% |  |  |  | Michael Martínez | 0.8h | 0.8h |
| 17 | 1.5 | **Construcción** |  | 12d | 2012-03-22 A | 2012-04-17 A |  | 100% |  |  |  |  | 65.6h | 65.6h |
| 18 | 1.5.1 | Envío de Contrato a Software Factory | milestone | 0d | 2012-03-22 A | 2012-03-22 A | 16 | 100% |  |  |  | Michael Martínez |  |  |
| 19 | 1.5.2 | Aprobación de Contrato por Software Factory | milestone | 0d | 2012-03-26 A | 2012-03-26 A | 18 | 100% |  |  |  | Gerente de Software Factory |  |  |
| 20 | 1.5.3 | **Sprint 1** |  | 11d | 2012-03-26 A | 2012-04-17 A |  | 100% |  |  |  |  | 65.6h | 65.6h |
| 21 | 1.5.3.1 | US001 |  | 1d | 2012-03-26 A | 2012-03-26 A | 19 | 100% |  |  | start no earlier than 2012-03-26 | Renzo Martínez | 8h | 8h |
| 22 | 1.5.3.2 | US004 |  | 1d | 2012-03-27 A | 2012-03-27 A | 21 | 100% |  |  |  | Renzo Martínez | 8h | 8h |
| 23 | 1.5.3.3 | US007 |  | 1d | 2012-03-29 A | 2012-03-29 A | 22 | 100% |  |  |  | Renzo Martínez | 8h | 8h |
| 24 | 1.5.3.4 | US009 |  | 1d | 2012-04-02 A | 2012-04-02 A | 23 | 100% |  |  |  | Rodolfo Cordero | 8h | 8h |
| 25 | 1.5.3.5 | US014 |  | 1d | 2012-04-03 A | 2012-04-03 A | 24 | 100% |  |  |  | Rodolfo Cordero | 8h | 8h |
| 26 | 1.5.3.6 | US017 |  | 1d | 2012-04-05 A | 2012-04-05 A | 25 | 100% |  |  |  | Rodolfo Cordero | 8h | 8h |
| 27 | 1.5.3.7 | Revisión por pares |  | 1d | 2012-04-09 A | 2012-04-09 A | 26 | 100% |  |  |  | Michael Martínez | 8h | 8h |
| 28 | 1.5.3.8 | Ejecución de integración |  | 0.2d | 2012-04-10 A | 2012-04-10 A | 27 | 100% |  |  | start no earlier than 2012-04-19 | Michael Martínez | 1.6h | 1.6h |
| 29 | 1.5.3.9 | Envío de Sprint 1 a QA | milestone | 0d | 2012-04-10 A | 2012-04-10 A | 28 | 100% |  |  |  | Michael Martínez |  |  |
| 30 | 1.5.3.10 | Recepción de observaciones por QA | milestone | 0d | 2012-04-17 A | 2012-04-17 A | 29 | 100% |  |  | start no earlier than 2012-04-17 | Analista QA |  |  |
| 31 | 1.5.3.11 | Corrección de observaciones |  | 1d | 2012-04-17 A | 2012-04-17 A | 30 | 100% |  |  |  | Michael Martínez | 8h | 8h |

| ID | WBS | Task | Type | Duration | Start | Finish | Predecessors | Complete | Constraint | Resources | Work | Actual work |
| --- | --- | --- | --- | --- | --- | --- | --- | --- | --- | --- | --- | --- |
| 32 | 1.6 | **Reunión de Asesoría/Cliente** |  | 1d | 2012-04-18 A | 2012-04-19 A |  | 100% |  |  | 8h | 8h |
| 33 | 1.6.1 | Revisión de avances |  | 0.5d | 2012-04-18 A | 2012-04-19 A | 31 | 100% |  | Michael Martínez | 4h | 4h |
| 34 | 1.6.2 | Asignación de nuevas actividades |  | 0.5d | 2012-04-18 A | 2012-04-19 A | 33 | 100% |  | David Mauricio | 4h | 4h |
| 35 | 1.6.3 | Elaboración de Acta de Reunión | milestone | 0d | 2012-04-18 A | 2012-04-18 A | 34 | 100% |  | Michael Martínez |  |  |
| 36 | 1.6.4 | Firma de acta de reunión | milestone | 0d | 2012-04-18 A | 2012-04-18 A | 35 | 100% |  | David Mauricio |  |  |
| 37 | 1.7 | Envío de Memoria del Proyecto a Gerencia |  | 1d | 2012-04-19 A | 2012-04-19 A |  | 100% | start no earlier than 2012-04-19 | Michael Martínez | 8h | 8h |
| 38 | 1.8 | **Construcción** |  | 13d | 2012-04-05 A | 2012-05-14 A |  | 100% |  |  | 89.6h | 89.6h |
| 39 | 1.8.1 | Envío de Contrato a Software Factory | milestone | 0d | 2012-04-05 A | 2012-04-05 A | 26 | 100% |  | Michael Martínez |  |  |
| 40 | 1.8.2 | Aprobación de Contrato por Software Factory | milestone | 0d | 2012-04-09 A | 2012-04-09 A | 39 | 100% |  | Gerente de Software Factory |  |  |
| 41 | 1.8.3 | **Sprint 2** |  | 13d | 2012-04-09 A | 2012-05-14 A |  | 100% |  |  | 89.6h | 89.6h |
| 42 | 1.8.3.1 | US002 |  | 1d | 2012-04-09 A | 2012-04-09 A | 40 | 100% |  | Rodolfo Cordero | 8h | 8h |
| 43 | 1.8.3.2 | US005 |  | 1d | 2012-04-10 A | 2012-04-10 A | 42 | 100% |  | Renzo Martínez | 8h | 8h |
| 44 | 1.8.3.3 | US011 |  | 1d | 2012-04-12 A | 2012-04-12 A | 43 | 100% |  | Rodolfo Cordero | 8h | 8h |
| 45 | 1.8.3.4 | US015 |  | 1.5d | 2012-04-16 A | 2012-04-17 A | 44 | 100% |  | Rodolfo Cordero | 12h | 12h |
| 46 | 1.8.3.5 | US018 |  | 1.5d | 2012-04-17 A | 2012-04-19 A | 45 | 100% |  | Rodolfo Cordero | 12h | 12h |
| 47 | 1.8.3.6 | US020 |  | 1.5d | 2012-04-23 A | 2012-04-24 A | 46 | 100% |  | Renzo Martínez | 12h | 12h |
| 48 | 1.8.3.7 | US026 |  | 1.5d | 2012-04-24 A | 2012-04-26 A | 47 | 100% |  | Renzo Martínez | 12h | 12h |
| 49 | 1.8.3.8 | Revisión por pares |  | 1d | 2012-04-30 A | 2012-04-30 A | 48 | 100% |  | Michael Martínez | 8h | 8h |
| 50 | 1.8.3.9 | Ejecución de integración |  | 0.2d | 2012-05-01 A | 2012-05-01 A | 49 | 100% |  | Michael Martínez | 1.6h | 1.6h |
| 51 | 1.8.3.10 | Envío de Sprint 2 a QA | milestone | 0d | 2012-05-01 A | 2012-05-01 A | 50 | 100% |  | Michael Martínez |  |  |
| 52 | 1.8.3.11 | Recepción de observaciones por QA | milestone | 0d | 2012-05-14 A | 2012-05-14 A | 51 | 100% | start no earlier than 2012-05-14 | Analista QA |  |  |
| 53 | 1.8.3.12 | Corrección de observaciones |  | 1d | 2012-05-14 A | 2012-05-14 A | 52 | 100% |  | Michael Martínez | 8h | 8h |
| 54 | 1.9 | **Reunión de Asesoría/Cliente** |  | 0.5d | 2012-05-15 A | 2012-05-15 A |  | 100% |  |  | 8h | 8h |
| 55 | 1.9.1 | Revisión de avances |  | 0.5d | 2012-05-15 A | 2012-05-15 A | 53 | 100% |  | Michael Martínez | 4h | 4h |
| 56 | 1.9.2 | Asignación de nuevas actividades |  | 0.5d | 2012-05-15 A | 2012-05-15 A | 55 | 100% |  | David Mauricio | 4h | 4h |
| 57 | 1.9.3 | Elaboración de Acta de Reunión | milestone | 0d | 2012-05-15 A | 2012-05-15 A | 56 | 100% |  | Michael Martínez |  |  |
| 58 | 1.9.4 | Firma de acuerdo de Acta de Reunión | milestone | 0d | 2012-05-15 A | 2012-05-15 A | 57 | 100% |  | David Mauricio |  |  |

| ID | WBS | Task | Type | Duration | Start | Finish | Predecessors | Complete | Constraint | Resources | Work | Actual work |
| --- | --- | --- | --- | --- | --- | --- | --- | --- | --- | --- | --- | --- |
| 59 | 1.10 | **Construcción** |  | 15.7d | 2012-04-26 A | 2012-06-11 A |  | 100% |  |  | 125.6h | 125.6h |
| 60 | 1.10.1 | Envío de Contrato a Software Factory | milestone | 0d | 2012-04-26 A | 2012-04-26 A | 48 | 100% |  | Michael Martínez |  |  |
| 61 | 1.10.2 | Aprobación de Contrato por Software Factory | milestone | 0d | 2012-04-30 A | 2012-04-30 A | 60 | 100% |  | Gerente de Software Factory |  |  |
| 62 | 1.10.3 | **Sprint 3** |  | 15.7d | 2012-04-30 A | 2012-06-11 A |  | 100% |  |  | 125.6h | 125.6h |
| 63 | 1.10.3.1 | US008 |  | 0.5d | 2012-04-30 A | 2012-04-30 A | 61 | 100% |  | Rodolfo Cordero | 4h | 4h |
| 64 | 1.10.3.2 | US012 |  | 0.5d | 2012-04-30 A | 2012-04-30 A | 63 | 100% |  | Rodolfo Cordero | 4h | 4h |
| 65 | 1.10.3.3 | US049 |  | 1d | 2012-05-01 A | 2012-05-01 A | 64 | 100% |  | Renzo Martínez | 8h | 8h |
| 66 | 1.10.3.4 | US021 |  | 0.5d | 2012-05-03 A | 2012-05-03 A | 65 | 100% |  | Renzo Martínez | 4h | 4h |
| 67 | 1.10.3.5 | US028 |  | 1d | 2012-05-03 A | 2012-05-14 A | 66 | 100% |  | Renzo Martínez | 8h | 8h |
| 68 | 1.10.3.6 | US029 |  | 1d | 2012-05-14 A | 2012-05-15 A | 67 | 100% |  | Renzo Martínez | 8h | 8h |
| 69 | 1.10.3.7 | US030 |  | 1d | 2012-05-15 A | 2012-05-17 A | 68 | 100% |  | Renzo Martínez | 8h | 8h |
| 70 | 1.10.3.8 | US032 |  | 1d | 2012-05-17 A | 2012-05-21 A | 69 | 100% |  | Renzo Martínez | 8h | 8h |
| 71 | 1.10.3.9 | US033 |  | 1d | 2012-05-21 A | 2012-05-22 A | 70 | 100% |  | Rodolfo Cordero | 8h | 8h |
| 72 | 1.10.3.10 | US050 |  | 1d | 2012-05-22 A | 2012-05-24 A | 71 | 100% |  | Renzo Martínez | 8h | 8h |
| 73 | 1.10.3.11 | US013 |  | 1d | 2012-05-24 A | 2012-05-28 A | 72 | 100% |  | Rodolfo Cordero | 8h | 8h |
| 74 | 1.10.3.12 | US022 |  | 1d | 2012-05-28 A | 2012-05-29 A | 73 | 100% |  | Rodolfo Cordero | 8h | 8h |
| 75 | 1.10.3.13 | US027 |  | 1d | 2012-05-29 A | 2012-05-31 A | 74 | 100% |  | Rodolfo Cordero | 8h | 8h |
| 76 | 1.10.3.14 | US010 |  | 1d | 2012-05-31 A | 2012-06-04 A | 75 | 100% |  | Rodolfo Cordero | 8h | 8h |
| 77 | 1.10.3.15 | Revisión por pares |  | 2d | 2012-06-04 A | 2012-06-07 A | 76 | 100% |  | Michael Martínez | 16h | 16h |
| 78 | 1.10.3.16 | Ejecución de integración |  | 0.2d | 2012-06-07 A | 2012-06-07 A | 77 | 100% |  | Michael Martínez | 1.6h | 1.6h |
| 79 | 1.10.3.17 | Envío de Sprint 3 a QA | milestone | 0d | 2012-06-07 A | 2012-06-07 A | 78 | 100% |  | Michael Martínez |  |  |
| 80 | 1.10.3.18 | Recepción de observaciones por QA | milestone | 0d | 2012-06-07 A | 2012-06-07 A | 79 | 100% | start no earlier than 2012-06-05 | Analista QA |  |  |
| 81 | 1.10.3.19 | Corrección de observaciones |  | 1d | 2012-06-07 A | 2012-06-11 A | 80 | 100% |  | Michael Martínez | 8h | 8h |
| 82 | 1.11 | **Reunión de Asesoría/Cliente** |  | 0.5d | 2012-06-12 A | 2012-06-12 A |  | 100% |  |  | 8h | 8h |
| 83 | 1.11.1 | Revisión de Avances |  | 0.5d | 2012-06-12 A | 2012-06-12 A | 81 | 100% |  | Michael Martínez | 4h | 4h |
| 84 | 1.11.2 | Asignación de nuevas actividades |  | 0.5d | 2012-06-12 A | 2012-06-12 A | 83 | 100% |  | David Mauricio | 4h | 4h |
| 85 | 1.11.3 | Elaboración de Acta de Reunión | milestone | 0d | 2012-06-12 A | 2012-06-12 A | 84 | 100% |  | Michael Martínez |  |  |
| 86 | 1.11.4 | Firma de acuerdos de Acta de Reunión | milestone | 0d | 2012-06-12 A | 2012-06-12 A | 85 | 100% |  | David Mauricio |  |  |

| ID | WBS | Task | Type | Duration | Start | Finish | Predecessors | Complete | Remaining | Total slack | Free slack | Constraint | Resources | Work | Actual work |
| --- | --- | --- | --- | --- | --- | --- | --- | --- | --- | --- | --- | --- | --- | --- | --- |
| 87 | 1.12 | **Diseño de la Red Neuronal** |  | 4d | 2012-06-11 A | 2012-06-19 A |  | 100% |  |  |  |  |  | 32h | 32h |
| 88 | 1.12.1 | Análisis de las características |  | 1d | 2012-06-11 A | 2012-06-12 A | 81 | 100% |  |  |  | start no earlier than 2012-06-11 | Michael Martínez | 8h | 8h |
| 89 | 1.12.2 | Análisis de los patrones |  | 1d | 2012-06-12 A | 2012-06-14 A | 88 | 100% |  |  |  |  | Michael Martínez | 8h | 8h |
| 90 | 1.12.3 | Diseño de la RNA |  | 1d | 2012-06-14 A | 2012-06-18 A | 89 | 100% |  |  |  |  | Michael Martínez | 8h | 8h |
| 91 | 1.12.4 | Envío de la red neuronal a QA | milestone | 0d | 2012-06-18 A | 2012-06-18 A | 90 | 100% |  |  |  |  | Michael Martínez |  |  |
| 92 | 1.12.5 | Recepción de observaciones por QA | milestone | 0d | 2012-06-18 A | 2012-06-18 A | 91 | 100% |  |  |  | start no earlier than 2012-06-18 | Analista QA |  |  |
| 93 | 1.12.6 | Corrección de observaciones |  | 1d | 2012-06-18 A | 2012-06-19 A | 92 | 100% |  |  |  |  | Michael Martínez | 8h | 8h |
| 94 | 1.13 | **Reunión de Asesoría/Cliente** |  | 1d | 2012-06-19 A | 2012-06-21 A |  | 100% |  |  |  |  |  | 8h | 8h |
| 95 | 1.13.1 | Revisión de avances |  | 0.5d | 2012-06-19 A | 2012-06-21 A | 93 | 100% |  |  |  |  | Michael Martínez | 4h | 4h |
| 96 | 1.13.2 | Asignación de nuevas actividades |  | 0.5d | 2012-06-21 A | 2012-06-21 A | 95 | 100% |  |  |  |  | David Mauricio | 4h | 4h |
| 97 | 1.13.3 | Elaboración de Acta de Reunión | milestone | 0d | 2012-06-21 A | 2012-06-21 A | 96 | 100% |  |  |  |  | Michael Martínez |  |  |
| 98 | 1.13.4 | Firma de acuerdos de Acta de Reunión | milestone | 0d | 2012-06-21 A | 2012-06-21 A | 97 | 100% |  |  |  |  | David Mauricio |  |  |
| 99 | 1.14 | Envío de Memoria del Proyecto a Gerencia |  | 1d | 2012-06-21 A | 2012-06-21 A |  | 100% |  |  |  | start no earlier than 2012-06-21 | Michael Martínez | 8h | 8h |
| 100 | 1.15 | Lanzamiento de Release 1 |  | 1d | 2012-06-19 A | 2012-06-21 A | 81 | 100% |  |  |  |  | Michael Martínez | 8h | 8h |
| 101 | 1.16 | Cierre parcial del Producto |  | 1d | 2012-06-21 A | 2012-06-25 A | 100 | 100% |  |  |  |  | Michael Martínez | 8h | 8h |
| 102 | 1.17 | Presentación Finall del Taller de Proyecto 1 |  | 1d | 2012-07-09 A | 2012-07-09 A | 101 | 100% |  |  |  | start no earlier than 2012-07-09 | Michael Martínez | 8h | 8h |
| 103 | 1.18 | **Contrucción** |  | 16.2d | 2012-08-13 A | 2012-09-20 |  | 93% | 1.07d | 30.8d |  |  |  | 235.2h | 227.2h |
| 104 | 1.18.1 | Envío de Contrato a Software Factory | milestone | 0d | 2012-08-13 A | 2012-08-13 A |  | 100% |  |  |  | start no earlier than 2012-08-13 | Michael Martínez |  |  |
| 105 | 1.18.2 | Aceptación de Contrato por Software Factory | milestone | 0d | 2012-08-16 A | 2012-08-16 A | 104 | 100% |  |  |  |  | Gerente de Software Factory |  |  |
| 106 | 1.18.3 | **Sprint 4** |  | 14.2d | 2012-08-20 A | 2012-09-20 | 102 | 93% | 0.93d | 30.8d |  |  | Michael Martínez | 235.2h | 227.2h |
| 107 | 1.18.3.1 | US034 |  | 1d | 2012-08-20 A | 2012-08-20 A | 105 | 100% |  |  |  | start no earlier than 2012-08-13 | Michael Martínez | 8h | 8h |
| 108 | 1.18.3.2 | US036 |  | 1d | 2012-08-20 A | 2012-08-20 A | 107 | 100% |  |  |  |  | Michael Martínez | 8h | 8h |
| 109 | 1.18.3.3 | US037 |  | 1d | 2012-08-21 A | 2012-08-21 A | 108 | 100% |  |  |  |  | Michael Martínez | 8h | 8h |
| 110 | 1.18.3.4 | US023 |  | 1d | 2012-08-23 A | 2012-08-23 A | 109 | 100% |  |  |  |  | Milagros Cruz | 8h | 8h |
| 111 | 1.18.3.5 | US024 |  | 1d | 2012-08-27 A | 2012-08-27 A | 110 | 100% |  |  |  |  | Milagros Cruz | 8h | 8h |
| 112 | 1.18.3.6 | US035 |  | 1d | 2012-08-28 A | 2012-08-28 A | 111 | 100% |  |  |  |  | Milagros Cruz | 8h | 8h |
| 113 | 1.18.3.7 | US031 |  | 1d | 2012-08-30 A | 2012-08-30 A | 112 | 100% |  |  |  |  | Milagros Cruz | 8h | 8h |
| 114 | 1.18.3.8 | US046 |  | 2d | 2012-09-03 A | 2012-09-04 A | 113 | 100% |  |  |  |  | Michael Martínez | 16h | 16h |
| 115 | 1.18.3.9 | US047 |  | 2d | 2012-09-06 A | 2012-09-10 A | 114 | 100% |  |  |  |  | Michael Martínez | 16h | 16h |
| 116 | 1.18.3.10 | US048 |  | 1d | 2012-09-11 A | 2012-09-11 A | 115 | 100% |  |  |  |  | Michael Martínez | 8h | 8h |
| 117 | 1.18.3.11 | US053 |  | 1d | 2012-09-13 A | 2012-09-13 A | 116 | 100% |  |  |  |  | Milagros Cruz | 8h | 8h |
| 118 | 1.18.3.12 | Revisión por pares |  | 1d | 2012-09-17 A | 2012-09-17 A | 117 | 100% |  |  |  |  | Michael Martínez | 8h | 8h |
| 119 | 1.18.3.13 | Ejecución de integración |  | 0.2d | 2012-09-18 A | 2012-09-18 A | 118 | 100% |  |  |  |  | Michael Martínez | 1.6h | 1.6h |
| 120 | 1.18.3.14 | Envío de Sprint 4 a QA | milestone | 0d | 2012-09-18 A | 2012-09-18 A | 119 | 100% |  |  |  |  | Michael Martínez |  |  |
| 121 | 1.18.3.15 | Recepción de observaciones por QA | milestone | 0d | 2012-09-18 | 2012-09-18 | 120 |  |  | 30.8d | 0d |  | Analista QA |  |  |
| 122 | 1.18.3.16 | Corrección de observaciones |  | 1d | 2012-09-18 | 2012-09-20 | 121 |  |  | 30.8d |  |  | Michael Martínez | 8h |  |

| ID | WBS | Task | Type | Duration | Start | Finish | Predecessors | Complete | Remaining | Total slack | Free slack | Constraint | Resources | Work | Actual work |
| --- | --- | --- | --- | --- | --- | --- | --- | --- | --- | --- | --- | --- | --- | --- | --- |
| 123 | 1.19 | **Reunión de Asesoría/Cliente** |  | 1d | 2012-08-14 A | 2012-08-14 A |  | 100% |  |  |  |  |  | 8h | 8h |
| 124 | 1.19.1 | Presentación de avances |  | 0.5d | 2012-08-14 A | 2012-08-14 A |  | 100% |  |  |  | start no earlier than 2012-08-14 | Michael Martínez | 4h | 4h |
| 125 | 1.19.2 | Asignación de nuevas actividades |  | 0.5d | 2012-08-14 A | 2012-08-14 A | 124 | 100% |  |  |  | start no earlier than 2012-08-14 | David Mauricio | 4h | 4h |
| 126 | 1.19.3 | Elaboración de Acta de Reunión | milestone | 0d | 2012-08-14 A | 2012-08-14 A | 125 | 100% |  |  |  | start no earlier than 2012-08-14 | Michael Martínez |  |  |
| 127 | 1.19.4 | Firma de acuerdos de Acta de Reunión | milestone | 0d | 2012-08-14 A | 2012-08-14 A | 126 | 100% |  |  |  | start no earlier than 2012-08-14 | David Mauricio |  |  |
| 128 | 1.20 | Envío de Memoria del Proyecto a Gerencia |  | 0.5d | 2012-09-17 A | 2012-09-17 A |  | 100% |  |  |  | start no earlier than 2012-09-17 | Michael Martínez | 4h | 4h |
| 129 | 1.21 | Envío de Paper del Proyecto a Gerencia |  | 0.5d | 2012-09-17 A | 2012-09-17 A |  | 100% |  |  |  | start no earlier than 2012-09-17 | Michael Martínez | 4h | 4h |
| 130 | 1.22 | **Construcción** |  | 11d | 2012-09-13 A | 2012-10-15 |  | 30% | 7.73d | 23d |  |  |  | 80h | 23.76h |
| 131 | 1.22.1 | Envío de Contrato a Software Factory | milestone | 0d | 2012-09-13 A | 2012-09-13 A | 117 | 100% |  |  |  | start no earlier than 2012-09-17 | Michael Martínez |  |  |
| 132 | 1.22.2 | Aprobación de Contrato por Software Factory | milestone | 0d | 2012-09-17 A | 2012-09-17 A | 131 | 100% |  |  |  |  | Gerente de Software Factory |  |  |
| 133 | 1.22.3 | **Sprint 5** |  | 10d | 2012-09-17 A | 2012-10-15 |  | 30% | 7.03d | 23d |  |  |  | 80h | 23.76h |
| 134 | 1.22.3.1 | US045 |  | 1d | 2012-09-17 A | 2012-09-17 A | 132 | 100% |  |  |  |  | Milagros Cruz | 8h | 8h |
| 135 | 1.22.3.2 | US055 |  | 2d | 2012-09-18 A | 2012-09-20 | 134 | 41% | 1.18d | 30d |  |  | Milagros Cruz | 16h | 6.56h |
| 136 | 1.22.3.3 | US051 |  | 1d | 2012-09-24 A | 2012-09-24 A | 135 | 100% |  |  |  |  | Rodolfo Cordero | 8h | 8h |
| 137 | 1.22.3.4 | US052 |  | 1d | 2012-09-25 A | 2012-09-25 | 136 | 15% | 0.85d | 7d | 0d |  | Rodolfo Cordero | 8h | 1.2h |
| 138 | 1.22.3.5 | US054 |  | 3d | 2012-09-27 | 2012-10-02 | 137 |  |  | 7d | 0d |  | Milagros Cruz | 24h |  |
| 139 | 1.22.3.6 | Revisión por pares |  | 1d | 2012-10-04 | 2012-10-04 | 138 |  |  | 23d | 0d |  | Michael Martínez | 8h |  |
| 140 | 1.22.3.7 | Ejecución de integración | milestone | 0d | 2012-10-04 | 2012-10-04 | 139 |  |  | 23d | 0d |  | Michael Martínez |  |  |
| 141 | 1.22.3.8 | Envío de Sprint 5 a QA | milestone | 0d | 2012-10-04 | 2012-10-04 | 140 |  |  | 23d | 0d |  | Michael Martínez |  |  |
| 142 | 1.22.3.9 | Recepción de observaciones por QA | milestone | 0d | 2012-10-04 | 2012-10-04 | 141 |  |  | 23d | 0d |  | Analista QA |  |  |
| 143 | 1.22.3.10 | Corrección de observaciones |  | 1d | 2012-10-15 | 2012-10-15 | 142 |  |  | 23d | 0d |  | Michael Martínez | 8h |  |
| 144 | 1.22.3.11 | Envío 2 de Sprint 5 a QA | milestone | 0d | 2012-10-15 | 2012-10-15 | 143 |  |  | 23d |  |  | Michael Martínez |  |  |
| 145 | 1.23 | **Reunión de Asesoría/Cliente** |  | 1d | 2012-09-20 A | 2012-09-20 A |  | 100% |  |  |  |  |  | 8h | 8h |
| 146 | 1.23.1 | Presentación de avances |  | 0.5d | 2012-09-20 A | 2012-09-20 A |  | 100% |  |  |  | start no earlier than 2012-09-20 | Michael Martínez | 4h | 4h |
| 147 | 1.23.2 | Asignación de nuevas actividades |  | 0.5d | 2012-09-20 A | 2012-09-20 A | 146 | 100% |  |  |  | start no earlier than 2012-08-14 | David Mauricio | 4h | 4h |
| 148 | 1.23.3 | Elaboración de Acta de Reunión | milestone | 0d | 2012-09-20 A | 2012-09-20 A | 147 | 100% |  |  |  | start no earlier than 2012-08-14 | Michael Martínez |  |  |
| 149 | 1.23.4 | Firma de acuerdos de Acta de Reunión | milestone | 0d | 2012-09-20 A | 2012-09-20 A | 148 | 100% |  |  |  | start no earlier than 2012-08-14 | David Mauricio |  |  |

| ID | WBS | Task | Type | Duration | Start | Finish | Predecessors | Total slack | Free slack | Constraint | Resources | Work |
| --- | --- | --- | --- | --- | --- | --- | --- | --- | --- | --- | --- | --- |
| 150 | 1.24 | **Construcción** |  | 7d | 2012-10-02 | 2012-10-25 |  | 7d |  |  |  | 56h |
| 151 | 1.24.1 | Envío de Contrato a Software Factory | milestone | 0d | 2012-10-02 | 2012-10-02 | 138 | 7d | 0d |  | Michael Martínez |  |
| 152 | 1.24.2 | Aprobación de Contrato por Software Factory | milestone | 0d | 2012-10-02 | 2012-10-02 | 151 | 7d | 0d |  | Gerente de Software Factory |  |
| 153 | 1.24.3 | Sprint 6 |  | 7d | 2012-10-04 | 2012-10-25 | 152 | 7d | 0d |  | Michael Martínez | 56h |
| 154 | 1.25 | **Reunión de Asesoría/Cliente** |  | 1d | 2012-10-16 | 2012-10-16 |  | 22d |  |  |  | 8h |
| 155 | 1.25.1 | Presentación de avances |  | 0.5d | 2012-10-16 | 2012-10-16 |  | 22d | 0d | start no earlier than 2012-10-16 | Michael Martínez | 4h |
| 156 | 1.25.2 | Asignación de nuevas actividades |  | 0.5d | 2012-10-16 | 2012-10-16 | 155 | 22d | 0d | start no earlier than 2012-09-18 | David Mauricio | 4h |
| 157 | 1.25.3 | Elaboración de Acta de Reunión | milestone | 0d | 2012-10-16 | 2012-10-16 | 156 | 22d | 0d | start no earlier than 2012-09-18 | Michael Martínez |  |
| 158 | 1.25.4 | Firma de acuerdos de Acta de Reunión | milestone | 0d | 2012-10-16 | 2012-10-16 | 157 | 22d |  | start no earlier than 2012-09-18 | David Mauricio |  |
| 159 | 1.26 | **Entrenamiento** |  | 6d | 2012-10-29 | 2012-11-08 |  | 7d |  |  |  | 48h |
| 160 | 1.26.1 | Implementación del módulo de entrenamiento |  | 2d | 2012-10-29 | 2012-10-30 | 153 | 7d | 0d |  | Michael Martínez | 16h |
| 161 | 1.26.2 | Entrenamiento del Sistema |  | 4d | 2012-11-01 | 2012-11-08 | 160 | 7d | 0d |  | Michael Martínez | 32h |
| 162 | 1.27 | Envío de Perfil de Tésis a Gerencia |  | 0.5d | 2012-11-08 | 2012-11-08 |  | 12.5d |  | start no earlier than 2012-11-08 | Michael Martínez | 4h |
| 163 | 1.28 | Envío de Paper del Proyecto a Gerencia |  | 0.5d | 2012-11-08 | 2012-11-08 |  | 12.5d |  | start no earlier than 2012-11-08 | Michael Martínez | 4h |
| 164 | 1.29 | **Reunión de Asesoría/Cliente** |  | 1d | 2012-11-12 | 2012-11-12 |  | 11d |  |  |  | 8h |
| 165 | 1.29.1 | Presentación de avances |  | 0.5d | 2012-11-12 | 2012-11-12 |  | 11d | 0d | start no earlier than 2012-11-12 | Michael Martínez | 4h |
| 166 | 1.29.2 | Asignación de nuevas actividades |  | 0.5d | 2012-11-12 | 2012-11-12 | 165 | 11d | 0d | start no earlier than 2012-11-12 | David Mauricio | 4h |
| 167 | 1.29.3 | Elaboración de Acta de Reunión | milestone | 0d | 2012-11-12 | 2012-11-12 | 166 | 11d | 0d | start no earlier than 2012-11-12 | Michael Martínez |  |
| 168 | 1.29.4 | Firma de acuerdos de Acta de Reunión | milestone | 0d | 2012-11-12 | 2012-11-12 | 167 | 11d |  | start no earlier than 2012-11-12 | David Mauricio |  |
| 169 | 1.30 | **Pruebas de Sistemas Expertos** |  | 1d | 2012-11-12 | 2012-11-12 |  | 7d |  |  |  | 8h |
| 170 | 1.30.1 | Validación y verificación de Sistemas Expertos |  | 1d | 2012-11-12 | 2012-11-12 | 161 | 7d | 0d |  | Michael Martínez | 8h |
| 171 | 1.31 | **Reunión de Asesoría/Cliente** |  | 1d | 2012-11-13 | 2012-11-13 |  | 10d |  |  |  | 8h |
| 172 | 1.31.1 | Presentación de avances |  | 0.5d | 2012-11-13 | 2012-11-13 |  | 10d | 0d | start no earlier than 2012-11-13 | Michael Martínez | 4h |
| 173 | 1.31.2 | Firma de Criterios de Aceptación del Producto |  | 0.5d | 2012-11-13 | 2012-11-13 | 172 | 10d | 0d |  | David Mauricio | 4h |
| 174 | 1.31.3 | Elaboración de Acta de Reunión | milestone | 0d | 2012-11-13 | 2012-11-13 | 173 | 10d | 0d |  | Michael Martínez |  |
| 175 | 1.31.4 | Firma de Acta de Reunión | milestone | 0d | 2012-11-13 | 2012-11-13 | 174 | 10d |  |  | David Mauricio |  |
| 176 | 1.32 | Lanzamiento de Release 2 |  | 1d | 2012-11-13 | 2012-11-13 | 170 | 7d | 0d |  | Michael Martínez | 8h |
| 177 | 1.33 | Cierre final del Producto |  | 1d | 2012-11-15 | 2012-11-15 | 176 | 7d | 2d |  | Michael Martínez | 8h |
| 178 | 1.34 | Envío de Memoria del Proyecto a Gerencia |  | 1d | 2012-11-22 | 2012-11-22 | 177 | 5d |  | start no earlier than 2012-11-22 | Michael Martínez | 8h |
| 179 | 1.35 | Entrega de Poster del Proyecto | milestone | 0d | 2012-12-06 | 2012-12-06 | 178 | 0d |  | start no earlier than 2012-12-06 | Michael Martínez |  |
| 180 | 1.36 | Presentación Final del Taller de Proyecto 2 |  | 1d | 2012-12-06 | 2012-12-06 | 179 | 0d |  |  | Michael Martínez | 8h |
